# Ricks Schedule Cobblestone Project1

Schedule from MS Project XML, 2026-10-23 to 2026-12-18.

## Calendars

- Standard: Mon-Sun off. Exceptions (off unless hours are given): 2026-11-26 to 2026-11-27 (Thanksgiving).

## Resources

| Resource | Rate |
| --- | --- |
| Craft |  |
| Schreiber | 55.55 |
| Hynes |  |

## Schedule

| ID | WBS | Task | Duration | Start | Finish | Predecessors | Complete | Resources | Cost |
| --- | --- | --- | --- | --- | --- | --- | --- | --- | --- |
| 1 | 1 | **Start-up/Erosion control** | 8d | 2026-10-23 08:00 | 2026-11-03 17:00 |  | 88% |  |  |
| 2 | 1.1 | Clearing tree area | 2d | 2026-10-23 08:00 | 2026-10-26 17:00 |  | 100% | Craft |  |
| 3 | 1.2 | Remove trees & debrris | 1d | 2026-10-27 08:00 | 2026-10-27 17:00 | 2 | 100% | Craft |  |
| 4 | 1.3 | Mobilization | 1d | 2026-10-28 08:00 | 2026-10-28 17:00 | 3 | 100% | Schreiber |  |
| 5 | 1.4 | Project layout | 1.5d | 2026-10-29 08:00 | 2026-10-30 12:00 | 4 | 100% | Schreiber |  |
| 6 | 1.5 | Silt femce | 0.5d | 2026-10-30 13:00 | 2026-10-30 17:00 | 5 | 100% | Schreiber |  |
| 7 | 1.6 | Inlet protection | 0.5d | 2026-11-02 08:00 | 2026-11-02 12:00 | 6 | 100% | Schreiber |  |
| 8 | 1.7 | Construction entrence | 0.5d | 2026-11-02 13:00 | 2026-11-02 17:00 | 7 | 100% | Schreiber |  |
| 9 | 1.8 | Remove Concrete | 0.5d | 2026-11-03 08:00 | 2026-11-03 12:00 | 8 |  | Schreiber |  |
| 10 | 1.9 | Miscelainious | 0.5d | 2026-11-03 13:00 | 2026-11-03 17:00 | 9 |  | Schreiber |  |
| 11 | 2 | **Grading/Dirt work** | 18.5d | 2026-10-23 08:00 | 2026-11-18 12:00 |  | 29% |  |  |
| 12 | 2.1 | Strip Topsoil | 4d | 2026-11-04 08:00 | 2026-11-09 17:00 | 10 | 50% | Schreiber |  |
| 13 | 2.2 | Cut to export | 4.5d | 2026-11-10 08:00 | 2026-11-16 12:00 | 12 | 25% | Schreiber |  |
| 14 | 2.3 | Cut to fill | 2d | 2026-11-16 13:00 | 2026-11-18 12:00 | 13 | 25% | Schreiber |  |
| 15 | 2.4 | Respread topsoil (open areas) | 1d | 2026-10-23 08:00 | 2026-10-23 17:00 |  |  | Schreiber |  |
| 16 | 2.5 | Respread topsoil (tight areas) | 1d | 2026-10-23 08:00 | 2026-10-23 17:00 |  |  | Schreiber |  |
| 17 | 3 | **Water** | 8.5d | 2026-11-18 13:00 | 2026-12-02 17:00 |  |  |  |  |
| 18 | 3.1 | Tap sleeve w/valve | 1d | 2026-11-18 13:00 | 2026-11-19 12:00 | 14 |  | Schreiber |  |
| 19 | 3.2 | Sample Tap | 0.5d | 2026-11-19 13:00 | 2026-11-19 17:00 | 18 |  | Schreiber |  |
| 20 | 3.3 | Hot Box | 4d | 2026-11-20 08:00 | 2026-11-25 17:00 | 19 |  | Schreiber | 9,876.54 |
| 21 | 3.4 | 6" DIP | 2d | 2026-11-30 08:00 | 2026-12-01 17:00 | 20 |  | Schreiber |  |
| 22 | 3.5 | 6" valve | 0.5d | 2026-12-02 08:00 | 2026-12-02 12:00 | 21 |  | Schreiber |  |
| 23 | 3.6 | 6" riser w/ flange | 0.5d | 2026-12-02 13:00 | 2026-12-02 17:00 | 22 |  | Schreiber |  |
| 24 | 4 | **Sanitary** | 1.5d | 2026-12-03 08:00 | 2026-12-04 12:00 |  |  |  |  |
| 25 | 4.1 | Connect to existing | 0.5d | 2026-12-03 08:00 | 2026-12-03 12:00 | 23 |  | Schreiber |  |
| 26 | 4.2 | 6" SDR21 pipe | 0.5d | 2026-12-03 13:00 | 2026-12-03 17:00 | 25 |  | Schreiber |  |
| 27 | 4.3 | Clean-out | 0.5d | 2026-12-04 08:00 | 2026-12-04 12:00 | 26 |  | Schreiber |  |

| ID | WBS | Task | Duration | Start | Finish | Predecessors | Resources |
| --- | --- | --- | --- | --- | --- | --- | --- |
| 28 | 5 | **Storm** | 10d | 2026-12-04 13:00 | 2026-12-18 12:00 |  |  |
| 29 | 5.1 | Bioretention ponds | 2d | 2026-12-04 13:00 | 2026-12-08 12:00 | 27 | Schreiber |
| 30 | 5.2 | Cobble Diaphram | 0.5d | 2026-12-08 13:00 | 2026-12-08 17:00 | 29 | Schreiber |
| 31 | 5.3 | 5 Catch basin & pipe | 6d | 2026-12-09 08:00 | 2026-12-16 17:00 | 30 | Schreiber |
| 32 | 5.4 | Connect to existing CB | 0.5d | 2026-12-17 08:00 | 2026-12-17 12:00 | 31 | Schreiber |
| 33 | 5.5 | Riprap & end sections | 0.5d | 2026-12-17 13:00 | 2026-12-17 17:00 | 32 | Schreiber |
| 34 | 5.6 | Spreader Spillway (R and R) | 0.5d | 2026-12-18 08:00 | 2026-12-18 12:00 | 33 | Schreiber |
| 35 | 6 | **Foundation** | 5d | 2026-10-23 08:00 | 2026-10-29 17:00 |  |  |
| 36 | 6.1 | Excavate | 5d | 2026-10-23 08:00 | 2026-10-29 17:00 |  | Schreiber |
| 37 | 7 | **Electrical** | 5d | 2026-10-23 08:00 | 2026-10-29 17:00 |  |  |
| 38 | 7.1 | Install Light bases w/ conduit | 5d | 2026-10-23 08:00 | 2026-10-29 17:00 |  | Schreiber |
| 39 | 8 | **Concrete work** | 2d | 2026-10-23 08:00 | 2026-10-26 17:00 |  |  |
| 40 | 8.1 | Layout | 1d | 2026-10-23 08:00 | 2026-10-23 17:00 |  | Schreiber |
| 41 | 8.2 | Curb prep | 1d | 2026-10-23 08:00 | 2026-10-23 17:00 |  | Schreiber |
| 42 | 8.3 | Curbs | 2d | 2026-10-23 08:00 | 2026-10-26 17:00 |  | Hynes |
